# New Product Plan

Schedule from MS Project, 2004-01-01 to 2006-12-28, costs in $.

## Calendars

- New Product Plan: Mon-Fri 08:00-12:00, 13:00-17:00; Sat-Sun off. Exceptions (off unless hours are given): 2004-01-01, 2004-01-19, 2004-02-16, 2004-05-31, 2004-07-05, 2004-09-06, 2004-10-11, 2004-11-25 to 2004-11-26, 2004-12-24.

## Resources

| Resource | Rate |
| --- | --- |
| Management | 80 |
| Product Engineering | 50 |
| Legal | 60 |
| Marketing | 60 |
| Project Manager | 70 |
| Process Engineer | 50 |
| Manufacturing Engineer | 50 |
| Safety | 50 |
| Accounting | 60 |
| Customer | 80 |
| Purchasing | 50 |

## Schedule

| ID | WBS | Task | Type | Duration | Start | Finish | Predecessors | Total slack | Resources | Work | Cost |
| --- | --- | --- | --- | --- | --- | --- | --- | --- | --- | --- | --- |
| 1 | 1 | **Initial New Product Screening Stage** |  | 9d | 2004-01-01 | 2004-01-14 |  | 0d |  | 72h | 3,600 |
| 2 | 1.1 | New product opportunity identified | milestone | 0d | 2004-01-01 | 2004-01-01 |  | 0d | Management; Product Engineering |  |  |
| 3 | 1.2 | Describe new product idea (1-page written disclosure) |  | 2d | 2004-01-02 | 2004-01-05 | 2 | 0d | Product Engineering | 16h | 800 |
| 4 | 1.3 | Gather information required for go/no-go decision |  | 1.2w | 2004-01-06 | 2004-01-13 | 3 | 0d | Product Engineering | 48h | 2,400 |
| 5 | 1.4 | Convene opportunity of screening committee (decision to pursue idea or not) |  | 1d | 2004-01-14 | 2004-01-14 | 4 | 0d | Product Engineering | 8h | 400 |
| 6 | 1.5 | Decision point - go/no-go to preliminary investigation | milestone | 0d | 2004-01-14 | 2004-01-14 | 5 | 0d | Management; Product Engineering |  |  |
| 7 | 2 | **Preliminary Investigation Stage** |  | 58d | 2004-01-15 | 2004-04-07 |  | 0d |  | 1216h | 68,640 |
| 8 | 2.1 | Assign resources to preliminary investigation |  | 1d | 2004-01-15 | 2004-01-15 | 6 | 0d | Management | 8h | 640 |
| 9 | 2.2 | Develop preliminary investigation plan |  | 1w | 2004-01-16 | 2004-01-23 | 8 | 5d | Product Engineering; Project Manager | 80h | 4,800 |
| 10 | 2.3 | Evaluate the market |  | 2w | 2004-01-16 | 2004-01-30 | 8 | 0d | Marketing | 80h | 4,800 |
| 11 | 2.4 | Analyze the competition |  | 1w | 2004-01-16 | 2004-01-23 | 8 | 5d | Marketing | 40h | 2,400 |
| 12 | 2.5 | **Technical Feasibility Analysis** |  | 20d | 2004-02-02 | 2004-03-01 |  | 0d |  | 160h | 8,000 |
| 13 | 2.5.1 | Produce lab scale product |  | 2w | 2004-02-02 | 2004-02-13 | 11, 9, 10 | 0d | Product Engineering | 80h | 4,000 |
| 14 | 2.5.2 | Evaluate internal product |  | 1w | 2004-02-17 | 2004-02-23 | 13 | 0d | Product Engineering | 40h | 2,000 |
| 15 | 2.5.3 | Identify production process steps required for manufacture |  | 1w | 2004-02-24 | 2004-03-01 | 14 | 0d | Process Engineer | 40h | 2,000 |
| 16 | 2.6 | Assess manufacturing capabilities |  | 2w | 2004-03-02 | 2004-03-15 | 15 | 0d | Product Engineering; Manufacturing Engineer | 160h | 8,000 |
| 17 | 2.7 | Determine safety issues |  | 2w | 2004-03-02 | 2004-03-15 | 16SS | 0d | Safety | 80h | 4,000 |
| 18 | 2.8 | Determine environmental issues |  | 2w | 2004-03-02 | 2004-03-15 | 17SS | 0d | Product Engineering; Legal | 160h | 8,800 |
| 19 | 2.9 | Review legal issues |  | 2w | 2004-03-02 | 2004-03-15 | 18SS | 0d | Legal; Project Manager | 160h | 10,400 |
| 20 | 2.10 | Perform financial evaluation |  | 2w | 2004-03-16 | 2004-03-29 | 19, 16, 17, 18 | 0d | Accounting | 80h | 4,800 |
| 21 | 2.11 | Develop risk analysis |  | 1w | 2004-03-30 | 2004-04-05 | 20 | 0d | Product Engineering; Project Manager | 80h | 4,800 |
| 22 | 2.12 | Draft initial development stage plan |  | 2w | 2004-03-16 | 2004-03-29 | 20SS | 5d | Product Engineering | 80h | 4,000 |
| 23 | 2.13 | Conduct preliminary stage review decision |  | 2d | 2004-04-06 | 2004-04-07 | 21, 22 | 0d | Management; Product Engineering; Project Manager | 48h | 3,200 |
| 24 | 2.14 | Decision point - go/no-go to development stage | milestone | 0d | 2004-04-07 | 2004-04-07 | 23 | 1d | Management; Project Manager |  |  |

| ID | WBS | Task | Type | Duration | Start | Finish | Predecessors | Total slack | Free slack | Resources | Work | Cost |
| --- | --- | --- | --- | --- | --- | --- | --- | --- | --- | --- | --- | --- |
| 25 | 3 | **Development Stage** |  | 264d | 2004-04-08 | 2005-04-21 |  | 0d |  |  | 5408h | 316,880 |
| 26 | 3.1 | Assign resources to development stage plan |  | 1d | 2004-04-08 | 2004-04-08 | 23 | 0d |  | Management; Project Manager | 16h | 1,200 |
| 27 | 3.2 | **Market Evaluation** |  | 40d | 2004-04-09 | 2004-06-04 |  | 2d |  |  | 480h | 26,800 |
| 28 | 3.2.1 | Gather market information |  | 3w | 2004-04-09 | 2004-04-29 | 26, 24 | 2d | 0d | Product Engineering; Marketing | 240h | 13,200 |
| 29 | 3.2.2 | Identify and contact customer sample group |  | 1w | 2004-04-30 | 2004-05-06 | 28 | 12d | 10d | Marketing | 40h | 2,400 |
| 30 | 3.2.3 | Perform competitor analysis |  | 3w | 2004-04-30 | 2004-05-20 | 28 | 2d | 0d | Marketing | 120h | 7,200 |
| 31 | 3.2.4 | Redefine product requirements |  | 2w | 2004-05-21 | 2004-06-04 | 29, 30 | 2d |  | Product Engineering | 80h | 4,000 |
| 32 | 3.3 | **Technical Product Evaluation** |  | 204d | 2004-04-09 | 2005-01-28 |  | 0d |  |  | 3488h | 200,960 |
| 33 | 3.3.1 | Establish product characteristics (performance criteria) |  | 2d | 2004-04-09 | 2004-04-12 | 26, 24 | 0d |  | Product Engineering | 16h | 800 |
| 34 | 3.3.2 | Develop prototype process |  | 2w | 2004-04-13 | 2004-04-26 | 33 | 0d |  | Product Engineering | 80h | 4,000 |
| 35 | 3.3.3 | Produce prototype product |  | 5w | 2004-04-27 | 2004-06-01 | 34 | 0d |  | Product Engineering | 200h | 10,000 |
| 36 | 3.3.4 | Conduct internal product review |  | 1w | 2004-06-02 | 2004-06-08 | 35 | 0d |  | Management; Product Engineering | 80h | 5,200 |
| 37 | 3.3.5 | Document patent application process |  | 2w | 2004-04-13 | 2004-04-26 | 33 | 229d | 194d | Product Engineering | 80h | 4,000 |
| 38 | 3.3.6 | Conduct marketing/technical review |  | 18.4w | 2004-06-09 | 2004-10-19 | 36, 31 | 0d |  | Marketing; Product Engineering | 1472h | 80,960 |
| 39 | 3.3.7 | Redesign process (if necessary) |  | 2w | 2004-10-20 | 2004-11-02 | 38 | 0d |  | Product Engineering; Process Engineer | 160h | 8,000 |
| 40 | 3.3.8 | Modify prototype process |  | 3w | 2004-11-03 | 2004-11-23 | 39 | 0d |  | Process Engineer | 120h | 6,000 |
| 41 | 3.3.9 | Develop plan for customer product testing |  | 1w | 2004-11-24 | 2004-12-02 | 40 | 20d |  | Project Manager | 40h | 2,800 |
| 42 | 3.3.10 | Produce product for customer evaluation |  | 5w | 2004-11-24 | 2004-12-31 | 40 | 0d |  | Product Engineering; Marketing; Project Manager | 600h | 36,000 |
| 43 | 3.3.11 | Conduct preliminary manufacturing process review |  | 2w | 2005-01-03 | 2005-01-14 | 42 | 10d |  | Process Engineer; Manufacturing Engineer | 160h | 8,800 |
| 44 | 3.3.12 | Conduct customer evaluations of prototype product |  | 4w | 2005-01-03 | 2005-01-28 | 42, 41 | 0d |  | Product Engineering; Project Manager; Customer | 480h | 34,400 |
| 45 | 3.4 | **Concept Evaluation** |  | 57d | 2005-01-31 | 2005-04-19 |  | 0d |  |  | 1376h | 84,960 |
| 46 | 3.4.1 | Conduct marketing/technical review |  | 2d | 2005-01-31 | 2005-02-01 | 44, 43 | 0d |  | Management; Product Engineering; Marketing | 48h | 3,280 |
| 47 | 3.4.2 | Prepare preliminary manufacturing design |  | 4w | 2005-02-02 | 2005-03-01 | 46 | 0d |  | Product Engineering | 160h | 8,800 |
| 48 | 3.4.3 | Evaluate contract manufacturing option |  | 2w | 2005-03-02 | 2005-03-15 | 47 | 5d |  | Legal; Process Engineer | 160h | 9,600 |
| 49 | 3.4.4 | Review legal and patent considerations |  | 2w | 2005-02-02 | 2005-02-15 | 46, 37 | 35d |  | Management; Legal | 160h | 12,000 |
| 50 | 3.4.5 | Perform environmental review |  | 2w | 2005-03-02 | 2005-03-15 | 47 | 5d |  | Product Engineering | 80h | 4,400 |
| 51 | 3.4.6 | Conduct product safety review |  | 3w | 2005-02-02 | 2005-02-22 | 46 | 20d |  | Product Engineering; Safety | 240h | 13,200 |
| 52 | 3.4.7 | Perform evaluate/predict product cycle time |  | 3w | 2005-03-02 | 2005-03-22 | 47 | 0d |  | Product Engineering; Project Manager | 240h | 15,600 |
| 53 | 3.4.8 | Update financial analysis |  | 2w | 2005-03-23 | 2005-04-05 | 52, 51, 50, 56, 48 | 0d |  | Accounting | 80h | 5,200 |
| 54 | 3.4.9 | Risk analysis |  | 2w | 2005-04-06 | 2005-04-19 | 49, 53, 51 | 0d |  | Product Engineering | 80h | 4,400 |
| 55 | 3.4.10 | Review preliminary investigation criteria |  | 2d | 2005-04-06 | 2005-04-07 | 53 | 8d |  | Management; Product Engineering; Legal | 48h | 3,280 |
| 56 | 3.4.11 | Develop pilot stage plan |  | 1w | 2005-02-02 | 2005-02-08 | 47SS | 30d |  | Product Engineering; Project Manager | 80h | 5,200 |
| 57 | 3.5 | Conduct development stage review |  | 2d | 2005-04-20 | 2005-04-21 | 54, 55, 56 | 0d |  | Product Engineering; Project Manager; Process Engineer | 48h | 2,960 |
| 58 | 3.6 | Decision point - go/no-go to pilot stage | milestone | 0d | 2005-04-21 | 2005-04-21 | 57 | 0d |  | Management; Project Manager |  |  |

| ID | WBS | Task | Duration | Start | Finish | Predecessors | Total slack | Resources | Work | Cost |
| --- | --- | --- | --- | --- | --- | --- | --- | --- | --- | --- |
| 59 | 4 | **Pilot Stage** | 115d | 2005-04-22 | 2005-09-29 |  | 0d |  | 1992h | 121,000 |
| 60 | 4.1 | Assign pilot stage resources | 1d | 2005-04-22 | 2005-04-22 | 57, 58 | 0d | Management; Project Manager | 16h | 1,280 |
| 61 | 4.2 | Secure customer commitment to participate in commercialization trials | 1w | 2005-04-25 | 2005-04-29 | 60 | 0d | Legal; Project Manager | 80h | 5,600 |
| 62 | 4.3 | **Trial Product Manufacture** | 70d | 2005-05-02 | 2005-08-05 |  | 0d |  | 1160h | 67,800 |
| 63 | 4.3.1 | Schedule/reserve pilot production facility | 1w | 2005-05-02 | 2005-05-06 | 61 | 0d | Project Manager | 40h | 3,000 |
| 64 | 4.3.2 | Resolve raw material and finish products logistics | 1w | 2005-05-09 | 2005-05-13 | 63 | 0d | Product Engineering; Project Manager | 80h | 5,200 |
| 65 | 4.3.3 | Review trial plan and requirements | 1w | 2005-05-02 | 2005-05-06 | 61 | 5d | Product Engineering; Project Manager | 80h | 5,200 |
| 66 | 4.3.4 | Start trial material production | 6w | 2005-05-16 | 2005-06-24 | 64, 65 | 0d | Product Engineering | 240h | 13,200 |
| 67 | 4.3.5 | Monitor customer trials | 4w | 2005-05-16 | 2005-06-10 | 66SS | 0d | Product Engineering | 160h | 8,800 |
| 68 | 4.3.6 | Review preliminary trial results | 2w | 2005-06-13 | 2005-06-24 | 67 | 0d | Product Engineering; Project Manager | 160h | 10,400 |
| 69 | 4.3.7 | Continue trial material production | 6w | 2005-06-27 | 2005-08-05 | 68 | 0d | Product Engineering | 240h | 13,200 |
| 70 | 4.3.8 | Complete customer trial monitoring | 4w | 2005-06-27 | 2005-07-22 | 69SS | 0d | Product Engineering | 160h | 8,800 |
| 71 | 4.4 | **Trial Analysis** | 49d | 2005-07-25 | 2005-09-29 |  | 0d |  | 736h | 46,320 |
| 72 | 4.4.1 | Confirm sales and marketing strategies | 1w | 2005-07-25 | 2005-07-29 | 70 | 0d | Marketing; Project Manager | 80h | 5,600 |
| 73 | 4.4.2 | Confirm product safety | 1w | 2005-07-25 | 2005-07-29 | 72SS | 0d | Project Manager; Safety | 80h | 5,200 |
| 74 | 4.4.3 | Reevaluate manufacturing processes | 3w | 2005-08-01 | 2005-08-19 | 72, 73 | 0d | Process Engineer | 120h | 6,600 |
| 75 | 4.4.4 | Develop commercialization plan | 3w | 2005-08-22 | 2005-09-09 | 74 | 0d | Product Engineering; Marketing | 240h | 14,400 |
| 76 | 4.4.5 | Review financials | 1w | 2005-09-12 | 2005-09-16 | 75 | 5d | Accounting | 40h | 2,600 |
| 77 | 4.4.6 | Review patent and legal issues | 2w | 2005-09-12 | 2005-09-23 | 75 | 0d | Legal | 80h | 5,200 |
| 78 | 4.4.7 | Assign commercialization leadership responsibility and resources | 2d | 2005-09-26 | 2005-09-27 | 76, 77 | 0d | Management; Project Manager | 32h | 2,560 |
| 79 | 4.4.8 | Pilot stage review and commercialization decision | 2d | 2005-09-28 | 2005-09-29 | 78 | 0d | Management; Product Engineering; Marketing; Process Engineer | 64h | 4,160 |
| 80 | 5 | **Commercialization Stage** | 195d | 2005-09-30 | 2006-06-29 |  | 0d |  | 3480h | 217,120 |
| 81 | 5.1 | **Product Manufacturing and Monitoring** | 168d | 2005-09-30 | 2006-05-23 |  | 0d |  | 2608h | 158,400 |
| 82 | 5.1.1 | Confirm product specification | 3d | 2005-09-30 | 2005-10-04 | 79 | 0d | Product Engineering; Manufacturing Engineer | 48h | 2,640 |
| 83 | 5.1.2 | Confirm customer specification acceptance and trial participation | 2w | 2005-10-05 | 2005-10-18 | 82 | 0d | Product Engineering; Project Manager | 160h | 10,400 |
| 84 | 5.1.3 | Develop manufacturing process requirements | 2w | 2005-10-19 | 2005-11-01 | 83 | 0d | Process Engineer; Manufacturing Engineer | 160h | 8,800 |
| 85 | 5.1.4 | Design and order new equipment | 6w | 2005-11-02 | 2005-12-13 | 84 | 0d | Product Engineering; Purchasing | 480h | 26,400 |
| 86 | 5.1.5 | Install and test new equipment or equipment modifications | 6w | 2005-12-14 | 2006-01-24 | 85 | 0d | Product Engineering; Manufacturing Engineer | 480h | 27,760 |
| 87 | 5.1.6 | Confirm manufacturing capabilities | 2w | 2006-01-25 | 2006-02-07 | 86 | 0d | Manufacturing Engineer | 80h | 4,800 |
| 88 | 5.1.7 | Develop and review production trial plan (resolve logistics issues) | 1w | 2006-02-08 | 2006-02-14 | 87 | 0d | Product Engineering; Project Manager | 80h | 5,600 |
| 89 | 5.1.8 | Start production of commercial product quantities | 8w | 2006-02-15 | 2006-04-11 | 88 | 0d | Product Engineering; Manufacturing Engineer | 640h | 38,400 |
| 90 | 5.1.9 | Monitor customer acceptance testing | 6w | 2006-04-12 | 2006-05-23 | 89 | 0d | Product Engineering; Project Manager | 480h | 33,600 |

| ID | WBS | Task | Duration | Start | Finish | Predecessors | Total slack | Free slack | Resources | Work | Cost |
| --- | --- | --- | --- | --- | --- | --- | --- | --- | --- | --- | --- |
| 91 | 5.2 | **Commercialization Analysis** | 57d | 2006-04-12 | 2006-06-29 |  | 0d |  |  | 872h | 58,720 |
| 92 | 5.2.1 | Perform internal product testing | 3w | 2006-04-12 | 2006-05-02 | 89 | 15d |  | Product Engineering | 120h | 7,200 |
| 93 | 5.2.2 | Review production performance results | 2w | 2006-05-24 | 2006-06-06 | 90, 92 | 0d |  | Management; Product Engineering; Project Manager | 240h | 18,400 |
| 94 | 5.2.3 | Identify long term production requirements | 3w | 2006-06-07 | 2006-06-27 | 93 | 0d |  | Process Engineer; Manufacturing Engineer | 240h | 14,400 |
| 95 | 5.2.4 | Recalculate product economics | 2w | 2006-06-07 | 2006-06-20 | 93 | 5d |  | Product Engineering; Marketing; Accounting | 240h | 16,000 |
| 96 | 5.2.5 | Affirm decision to continue commercialization program | 2d | 2006-06-28 | 2006-06-29 | 95, 94 | 0d |  | Management; Project Manager | 32h | 2,720 |
| 97 | 6 | **Post Commercialization Review** | 130d | 2006-06-30 | 2006-12-28 |  | 0d |  |  | 3520h | 276,400 |
| 98 | 6.1 | Determine if product is meeting customer cost/performance expectations | 12w | 2006-06-30 | 2006-09-21 | 96 | 0d |  | Management; Project Manager | 960h | 81,600 |
| 99 | 6.2 | Determine if sales have met projections | 12w | 2006-06-30 | 2006-09-21 | 98SS | 10d | 0d | Management; Marketing | 960h | 76,800 |
| 100 | 6.3 | Determine if product is sustaining its position against competitive response | 6w | 2006-09-22 | 2006-11-02 | 99 | 10d |  | Management; Marketing | 480h | 38,400 |
| 101 | 6.4 | Evaluate manufacturing process for stability and cost effectiveness | 8w | 2006-09-22 | 2006-11-16 | 98 | 0d |  | Project Manager; Manufacturing Engineer | 640h | 44,800 |
| 102 | 6.5 | Determine if current economics are consistent with projected economics | 3w | 2006-11-17 | 2006-12-07 | 101, 100 | 0d |  | Marketing | 120h | 8,400 |
| 103 | 6.6 | Evaluate opportunities to expand product or product line | 3w | 2006-12-08 | 2006-12-28 | 102 | 0d |  | Management; Product Engineering; Marketing | 360h | 26,400 |
